task,workstream,start,end,status
Field research – 22 touchpoints,Research,2026-04-01,2026-05-31,Done
Competitor benchmark (28 products),Research,2026-04-15,2026-06-15,Done
Priority SKU model,Product,2026-05-15,2026-07-15,Done
System Builder prototype,Digital,2026-06-15,2026-09-30,Done
Standard TDS / PIS format,Digital,2026-07-01,2026-10-15,In progress
Demo-Kit pilot (crack gauge),Field,2026-08-01,2026-11-30,In progress
WhatsApp tech community (T3),Contractor,2026-09-01,2026-12-31,In progress
Specifier CPD series,Specifier,2026-10-01,2027-01-31,Planned
Tier 1.5/2 city pilots + A/B tests,GTM,2026-11-01,2027-02-28,Planned
HDPE / SBS vendor qualification,Product,2026-07-15,2027-01-31,In progress
Applicator Club launch,Contractor,2026-12-01,2027-03-31,Planned
Regional scale-up review,GTM,2027-02-01,2027-03-31,Planned
